# House Build

Schedule from ProjectLibre, 2024-02-05 to 2024-12-31.

## Calendars

- Standard: Mon-Fri 08:00-12:00, 13:00-17:00; Sat-Sun off.

## Resources

| Resource |
| --- |
| Unassigned |

## Schedule

| ID | WBS | Task | Type | Duration | Start | Finish | Predecessors | Constraint |
| --- | --- | --- | --- | --- | --- | --- | --- | --- |
| 1 | 1 | Contribution charge commencement deadline | milestone | 0d | 2024-04-01 | 2024-04-01 |  | must finish on 2024-04-01 |
| 2 | 2 | Stamp duty commencement deadline | milestone | 0d? | 2024-12-31 | 2024-12-31 |  | must finish on 2024-12-31 |
| 3 | 3 | **Prepare site for foundations install** |  | 111d | 2024-02-05 | 2024-07-08 |  | start no earlier than 2024-02-05 |
| 4 | 3.1 | Structural engineering and general arrangement drawings |  | 15d | 2024-02-05 | 2024-02-23 |  |  |
| 5 | 3.2 | Offsite manufacture of timber frames |  | 25d | 2024-06-01 | 2024-07-05 | 4 | start no earlier than 2024-06-01 |
| 6 | 3.3 | Install pipes popping up into house with +/- 5mm tolerance |  | 2d | 2024-02-26 | 2024-02-27 | 4 |  |
| 7 | 3.4 | Hardcore site for heavy vehicles |  | 1d | 2024-02-28 | 2024-02-28 | 6 |  |
| 8 | 3.5 | Scaffolding erected around house + loading bays (ticketed) |  | 2d | 2024-02-29 | 2024-03-01 | 7 |  |
| 9 | 3.6 | Self build insurance |  | 1d | 2024-07-08 | 2024-07-08 | 5 |  |
| 10 | 4 | Foundations install |  | 5d | 2024-07-09 | 2024-07-15 | 3 |  |
| 11 | 5 | Timber frame install |  | 5d | 2024-07-16 | 2024-07-22 | 10 |  |
| 12 | 6 | **Exterior** |  | 75d | 2024-07-23 | 2024-11-04 | 11 |  |
| 13 | 6.1 | Wall glazing |  | 40d | 2024-07-23 | 2024-09-16 |  |  |
| 14 | 6.2 | Insulated thermal window brackets |  | 3d | 2024-09-17 | 2024-09-19 | 13 |  |
| 15 | 6.3 | Insulated window sills |  | 5d | 2024-09-17 | 2024-09-23 | 13 |  |
| 16 | 6.4 | Flat roof install |  | 2d | 2024-07-23 | 2024-07-24 |  |  |
| 17 | 6.5 | Roof slates + solar PV rails install |  | 5d | 2024-07-23 | 2024-07-29 |  |  |
| 18 | 6.6 | External cavity wiring |  | 2d | 2024-07-23 | 2024-07-24 |  |  |
| 19 | 6.7 | Entrance door |  | 1d | 2024-07-23 | 2024-07-23 |  |  |
| 20 | 6.8 | First air tightness blower test |  | 2d | 2024-09-24 | 2024-09-25 | 13, 14, 15, 17, 18, 19 |  |
| 21 | 6.9 | **Exterior leaf** |  | 15d | 2024-09-26 | 2024-10-16 | 20 |  |
| 22 | 6.9.1 | Blocks to west, south, east, some of north |  | 7d | 2024-09-26 | 2024-10-04 |  |  |
| 23 | 6.9.2 | Charred larch leaf to north |  | 3d | 2024-09-26 | 2024-09-30 |  |  |
| 24 | 6.9.3 | Fascia and soffit |  | 5d | 2024-09-26 | 2024-10-02 |  |  |
| 25 | 6.9.4 | External leaf render |  | 10d | 2024-10-03 | 2024-10-16 | 24 |  |

| ID | WBS | Task | Duration | Start | Finish | Predecessors |
| --- | --- | --- | --- | --- | --- | --- |
| 26 | 6.10 | **After remove scaffolding** | 13d | 2024-10-17 | 2024-11-04 | 21 |
| 27 | 6.10.1 | **Exterior services** | 5d | 2024-10-17 | 2024-10-23 |  |
| 28 | 6.10.1.1 | Soakaways and SUDS boxes | 2d | 2024-10-17 | 2024-10-18 |  |
| 29 | 6.10.1.2 | Exterior foulwater and stormwater | 5d | 2024-10-17 | 2024-10-23 |  |
| 30 | 6.10.1.3 | Bury 150m of brine loop pipe for ventilation | 2d | 2024-10-17 | 2024-10-18 |  |
| 31 | 6.10.1.4 | Suspended rainwater harvesting tanks | 1d | 2024-10-17 | 2024-10-17 |  |
| 32 | 6.10.2 | Footpaths and patio | 5d | 2024-10-24 | 2024-10-30 | 27 |
| 33 | 6.10.3 | Driveway | 3d | 2024-10-31 | 2024-11-04 | 32 |
| 34 | 7 | Construct rear earthern mound | 2d | 2024-10-21 | 2024-10-22 | 30 |
| 35 | 8 | Complete walled garden after filling with topsoil | 2d | 2024-10-31 | 2024-11-01 | 30, 32 |
| 36 | 9 | Level ground ready for grass seeding | 1d | 2024-11-04 | 2024-11-04 | 32, 34, 35 |
| 37 | 10 | **Interior** | 110d | 2024-07-23 | 2024-12-23 | 11 |
| 38 | 10.1 | **First fix** | 74d | 2024-07-23 | 2024-11-01 |  |
| 39 | 10.1.1 | Stairs | 2d | 2024-07-23 | 2024-07-24 |  |
| 40 | 10.1.2 | First fix internal AC wiring | 10d | 2024-09-17 | 2024-09-30 | 13, 18, 19 |
| 41 | 10.1.3 | **First fix internal DC wiring** | 30d | 2024-09-17 | 2024-10-28 | 13 |
| 42 | 10.1.3.1 | 24v DC wiring | 10d | 2024-09-17 | 2024-09-30 |  |
| 43 | 10.1.3.2 | 9v DC wiring | 10d | 2024-10-01 | 2024-10-14 | 42 |
| 44 | 10.1.3.3 | 54v DC wiring + ethernet | 10d | 2024-10-15 | 2024-10-28 | 43 |
| 45 | 10.1.4 | **First fix internal plumbing** | 10d | 2024-09-17 | 2024-09-30 | 13 |
| 46 | 10.1.4.1 | Water softener | 1d | 2024-09-17 | 2024-09-17 |  |
| 47 | 10.1.4.2 | Reverse osmosis unit | 1d | 2024-09-17 | 2024-09-17 |  |
| 48 | 10.1.4.3 | Underfloor heating | 3d | 2024-09-17 | 2024-09-19 |  |
| 49 | 10.1.4.4 | Thermal store | 10d | 2024-09-17 | 2024-09-30 |  |
| 50 | 10.1.5 | Ventilation system | 10d | 2024-10-21 | 2024-11-01 | 30, 40, 42, 49 |
| 51 | 10.1.6 | Fire mist suppression system | 1d | 2024-10-01 | 2024-10-01 | 45 |
| 52 | 10.1.7 | Paint steel its final colour | 5d | 2024-07-23 | 2024-07-29 |  |
| 53 | 10.2 | Second air tightness blower test | 1d | 2024-11-04 | 2024-11-04 | 38 |
| 54 | 10.3 | Install plasterboard and skim | 10d | 2024-11-05 | 2024-11-18 | 53 |
| 55 | 10.4 | Paint everything white | 10d | 2024-11-19 | 2024-12-02 | 54 |

| ID | WBS | Task | Duration | Start | Finish | Predecessors |
| --- | --- | --- | --- | --- | --- | --- |
| 56 | 10.5 | **Second fix** | 15d | 2024-12-03 | 2024-12-23 | 55 |
| 57 | 10.5.1 | Affix all sockets and switches and lights | 5d | 2024-12-03 | 2024-12-09 |  |
| 58 | 10.5.2 | Install showers, baths and tiling for them | 10d | 2024-12-03 | 2024-12-16 |  |
| 59 | 10.5.3 | Install sanitaryware | 5d | 2024-12-03 | 2024-12-09 |  |
| 60 | 10.5.4 | Kitchen | 5d | 2024-12-03 | 2024-12-09 |  |
| 61 | 10.5.5 | Flooring | 15d | 2024-12-03 | 2024-12-23 |  |
| 62 | 10.5.6 | Wardrobes, book cases, shelving | 15d | 2024-12-03 | 2024-12-23 |  |
| 63 | 10.5.7 | Glass ballustrading for bridge and stairs | 3d | 2024-12-03 | 2024-12-05 |  |
